# 机端部署App开发计划

Schedule from a web Gantt chart, 2024-04-22 to 2024-08-13.
Saturdays and Sundays are off

## Schedule

| ID | WBS | Task | Duration | Start | Finish | Predecessors | Complete | inPeople | Status |
| --- | --- | --- | --- | --- | --- | --- | --- | --- | --- |
| 2 | 1 | **需求确认** | 17d | 2024-04-22 | 2024-05-14 |  | 21% | 陶旭 |  |
| 3 | 1.1 | 需求定义 | 5d | 2024-04-22 | 2024-04-26 |  | 70% |  |  |
| 4 | 1.2 | 需求评审发布 | 10d | 2024-04-29 | 2024-05-10 | 3 |  |  | waiting |
| 5 | 1.3 | 成熟度定义 | 2d | 2024-05-13 | 2024-05-14 | 4 |  |  | waiting |
| 6 | 2 | **方案设计** | 15d | 2024-05-13 | 2024-05-31 |  |  |  |  |
| 7 | 2.1 | 系统方案设计（待定） | 5d | 2024-05-13 | 2024-05-17 | 4 |  | 叶良伟 | waiting |
| 8 | 2.2 | 系统方案评审发布（待定） | 2d | 2024-05-20 | 2024-05-21 | 7 |  | 叶良伟 | waiting |
| 9 | 2.3 | UX方案设计评审 | 15d | 2024-05-13 | 2024-05-31 | 4 |  | 周华强 | waiting |
| 10 | 2.4 | 接口定义 | 5d | 2024-05-22 | 2024-05-28 | 8 |  | 周华强、曾优、舒业超 | waiting |
| 11 | 3 | **软件开发** | 34d | 2024-05-29 | 2024-07-15 |  |  |  |  |
| 12 | 3.1 | **智能化软件** | 20d | 2024-05-29 | 2024-06-25 |  |  | 曾优 |  |
| 13 | 3.1.1 | 代码实现 | 10d | 2024-05-29 | 2024-06-11 | 10 |  |  | waiting |
| 14 | 3.1.2 | 单元测试 | 10d | 2024-06-12 | 2024-06-25 | 13 |  |  | waiting |
| 15 | 3.2 | **云控系统软件（）** | 20d | 2024-05-29 | 2024-06-25 |  |  | 舒业超 |  |
| 16 | 3.2.1 | 代码实现 | 10d | 2024-05-29 | 2024-06-11 | 10 |  |  | waiting |
| 17 | 3.2.2 | 单元测试 | 10d | 2024-06-12 | 2024-06-25 | 16 |  |  | waiting |
| 18 | 3.3 | **应用化系统软件** | 20d | 2024-06-03 | 2024-06-28 |  |  | 周华强 |  |
| 19 | 3.3.1 | 代码实现 | 10d | 2024-06-03 | 2024-06-14 | 9, 10 |  |  | waiting |
| 20 | 3.3.2 | 单元测试 | 10d | 2024-06-17 | 2024-06-28 | 19 |  |  | waiting |
| 21 | 3.4 | 功能联调 | 10d | 2024-07-01 | 2024-07-12 | 14, 17, 20 |  | 周华强、曾优、舒业超 | waiting |
| 22 | 3.5 | 版本提测 | 1d | 2024-07-15 | 2024-07-15 | 21 |  | 周华强、曾优、舒业超 | waiting |
| 23 | 4 | **集成测试** | 3d | 2024-07-16 | 2024-07-18 |  |  |  |  |
| 24 | 4.1 | 功能性能测试 | 3d | 2024-07-16 | 2024-07-18 | 22 |  | 冯苏丽 | waiting |
| 25 | 5 | Bug修复 | 5d | 2024-07-19 | 2024-07-25 | 24 |  | 周华强、曾优、舒业超 | waiting |
| 26 | 6 | 部署便利性优化 | 5d | 2024-07-26 | 2024-08-01 | 25 |  | 周华强、曾优、舒业超 | waiting |
| 27 | 7 | 全性能达成 | 5d | 2024-08-02 | 2024-08-08 | 26 |  | 周华强、曾优、舒业超、 | waiting |

| ID | WBS | Task | Duration | Start | Finish | Predecessors | inPeople | Status |
| --- | --- | --- | --- | --- | --- | --- | --- | --- |
| 28 | 8 | **系统确认** | 3d | 2024-08-09 | 2024-08-13 |  |  |  |
| 29 | 8.1 | 产品验收 | 3d | 2024-08-09 | 2024-08-13 | 27 | 陶旭 | waiting |
